# ForumView-Nov-Dec2006

How a schedule from MS Project changed from version to version. A marks actual dates.

## Version 1 (saved 2006-12-21, file ForumView-Nov-Dec2006.mpp)

Note of the change: Initial

| ID | WBS | Task | Duration | Start | Finish | Predecessors | Complete | Total float | Constraint |
| --- | --- | --- | --- | --- | --- | --- | --- | --- | --- |
| 2 | 1 | **Завершение 1-го договора** | 18.75d | 2006-11-27 10:00 A | 2006-12-21 10:00 A |  | 100% |  | start no earlier than 2006-11-27 10:00 |
| 3 |  | Убрать отменку элемента после опции "Элементы в плоскости выбора | 2h | 2006-11-27 10:00 A | 2006-11-27 12:00 A |  | 100% |  | must start on 2006-11-27 10:00 |
| 4 | 1.2 | **Исправление ошибок** | 2d | 2006-11-27 13:00 A | 2006-11-29 12:00 A |  | 100% |  |  |
| 5 |  | Баг с треугольниками | 8h | 2006-11-27 13:00 A | 2006-11-28 12:00 A | 3 | 100% |  | start no earlier than 2006-11-27 10:00 |
| 6 |  | Зависание на фрагменте схемы | 2h | 2006-11-28 13:00 A | 2006-11-28 15:00 A | 5 | 100% |  |  |
| 7 |  | Треугольники, четырёхугольники с числом узлов более 3-х/4-х | 2h | 2006-11-28 15:00 A | 2006-11-28 17:00 A | 6 | 100% |  |  |
| 8 |  | Неправильно работает отсечение окном | 4h | 2006-11-29 08:00 A | 2006-11-29 12:00 A | 7 | 100% |  |  |
| 9 | 1.3 | **Новый фунционал** | 11.88d | 2006-12-01 13:00 A | 2006-12-18 16:00 A |  | 100% |  |  |
| 10 |  | Более корректная прорисовка шрифтов в значениях | 12h | 2006-12-05 14:00 A | 2006-12-07 09:00 A | 16 | 100% |  | start no earlier than 2006-12-05 05:00 |
| 11 |  | Коэффициент в настройки для шкалы деформации | 4h | 2006-12-11 15:00 A | 2006-12-11 20:00 A | 29, 21 | 100% |  | start no earlier than 2006-11-30 06:00 |
| 12 |  | Настройки шрифтов | 1d | 2006-12-11 21:00 A | 2006-12-12 11:00 A | 11 | 100% |  |  |
| 13 |  | Обычные кнопки вместо чекбоксов | 4h | 2006-12-12 11:00 A | 2006-12-12 15:00 A | 12 | 100% |  |  |
| 14 | 1.3.5 | **Отображение усилий** | 11.88d | 2006-12-01 13:00 A | 2006-12-18 16:00 A |  | 100% |  |  |
| 15 |  | Получение результатов | 1d | 2006-12-01 13:00 A | 2006-12-04 14:00 A | 28 | 100% |  |  |
| 16 |  | Отрисовка сетки | 1d | 2006-12-04 14:00 A | 2006-12-05 14:00 A | 15 | 100% |  | start no earlier than 2006-12-04 12:00 |
| 17 | 1.3.5.3 | **Отрисовка сетки, значения в центре** | 8.38d | 2006-12-07 09:00 A | 2006-12-18 16:00 A | 10 | 100% |  |  |
| 18 |  | Оцифровка фактора внутри эл-та | 4h | 2006-12-07 09:00 A | 2006-12-07 14:00 A |  | 100% |  |  |
| 19 |  | Разбиение элемента по значениям фактора внутри | 4h | 2006-12-12 15:00 A | 2006-12-13 13:00 A | 13 | 100% |  |  |
| 20 |  | Учет промежуточных узлоа для треугольников, четырёхугольников с числом узлов более 3-х/4-х | 6h | 2006-12-18 10:00 A | 2006-12-18 16:00 A | 19 | 100% |  | start no earlier than 2006-12-18 10:00 |
| 21 |  | Клеёнка | 6h | 2006-12-07 14:00 A | 2006-12-08 11:00 A | 18, 17, 16 | 100% |  |  |
| 22 |  | Промежуточное тестирование | 1d | 2006-12-13 13:00 A | 2006-12-14 11:00 A | 19, 13 | 100% |  |  |
| 23 |  | Приезд КВС, показ рез-тов | 4h | 2006-12-14 13:00 A | 2006-12-14 17:00 A | 22 | 100% |  | start no earlier than 2006-12-14 13:00 |
| 24 |  | Исправление ошибок (от Куликова) | 4h | 2006-12-18 16:00 A | 2006-12-19 09:00 A | 20 | 100% |  |  |
| 25 |  | Исправление ошибок 2 | 1d | 2006-12-20 10:00 A | 2006-12-21 10:00 A | 24 | 100% |  | start no earlier than 2006-12-20 10:00 |
| 26 | 2 | **Отображение результатов внутри вьювер-а** | 19.5d | 2006-11-29 13:00 A | 2006-12-26 10:00 |  | 45% | 0d |  |
| 27 |  | Кнопка и отображение результатов | 1d | 2006-11-29 13:00 A | 2006-11-30 12:00 A | 4 | 100% |  |  |
| 28 |  | View для результатов расчета | 1d | 2006-11-30 13:00 A | 2006-12-01 12:00 A | 27 | 100% |  |  |
| 29 |  | Frame для результатов расчета | 4h | 2006-12-08 16:00 A | 2006-12-11 15:00 A | 21 | 100% |  |  |
| 30 |  | Новый тулбар | 1d | 2006-12-21 10:00 | 2006-12-22 10:00 | 23, 2 |  | 0d |  |
| 31 |  | Многооконный режим | 1d | 2006-12-22 10:00 | 2006-12-25 10:00 | 30 |  | 0d |  |
| 32 |  | Завершение реализации | 1d | 2006-12-25 10:00 | 2006-12-26 10:00 | 31 |  | 0d |  |
| 33 |  | Тестирование поставки | 1d | 2006-12-26 10:00 | 2006-12-27 10:00 | 32 |  | 0d |  |

## Version 2 (saved 2016-01-14, file ForumView-Nov-Dec2006-Jan2016.mpp)

Note of the change: Initial

Last finish 2006-12-27 → 2016-02-11 (+3333d).

Added:

| ID | Task | Duration | Start | Finish | Predecessors | Constraint | Resources |
| --- | --- | --- | --- | --- | --- | --- | --- |
| 34 | **Дополнительные задачи по вьюверу** | 26d | 2016-01-08 A | 2016-02-11 |  |  |  |
| 35 | Шкала факторов в виде плавающего окна | 8d | 2016-01-08 A | 2016-01-18 |  | start no earlier than 2016-01-08 | Цветков [50%] |
| 36 | Исследование получения данных из Скад 21 | 4d | 2016-01-18 | 2016-01-22 | 35 | start no earlier than 2016-01-07 | Цветков [50%] |
| 37 | **Отображение нагрузок на расчетной схеме** | 10d | 2016-01-22 | 2016-02-05 | 36 |  |  |
| 38 | Распределенные нагрузки | 4d | 2016-01-22 | 2016-01-28 |  |  | Цветков [50%] |
| 39 | Узловые нагрузки | 2d | 2016-01-28 | 2016-02-01 | 38 |  | Цветков [50%] |
| 40 | Другие нагрузки | 4d | 2016-02-01 | 2016-02-05 | 39 |  | Цветков [50%] |
| 41 | **Многооконный режим** | 4d | 2016-02-05 | 2016-02-11 | 40 |  |  |
| 42 | Многооконный режим | 4d | 2016-02-05 | 2016-02-11 |  |  | Цветков [50%] |

Changed:

| ID | Task | Start | Finish | Duration | Total float | Predecessors | Other |
| --- | --- | --- | --- | --- | --- | --- | --- |
| 2 | **Завершение 1-го договора** | 2006-11-27 10:00 A → 2006-11-27 A | 2006-12-21 10:00 A → 2006-12-21 A |  |  |  | constraint start no earlier than 2006-11-27 10:00 → start no earlier than 2006-11-27; baseline start 2006-11-27 08:00 → 2006-11-27; baseline finish 2006-12-14 17:00 → 2006-12-14 |
| 3 | Убрать отменку элемента после опции "Элементы в плоскости выбора | 2006-11-27 10:00 A → 2006-11-27 A | 2006-11-27 12:00 A → 2006-11-27 A |  |  |  | constraint must start on 2006-11-27 10:00 → must start on 2006-11-27; baseline start 2004-05-28 08:00 → 2004-05-28; baseline finish 2004-05-28 10:00 → 2004-05-28 |
| 4 | **Исправление ошибок** | 2006-11-27 13:00 A → 2006-11-27 A | 2006-11-29 12:00 A → 2006-11-29 A |  |  |  | baseline start 2006-11-27 08:00 → 2006-11-27; baseline finish 2006-11-28 17:00 → 2006-11-28 |
| 5 | Баг с треугольниками | 2006-11-27 13:00 A → 2006-11-27 A | 2006-11-28 12:00 A → 2006-11-28 A |  |  |  | constraint start no earlier than 2006-11-27 10:00 → start no earlier than 2006-11-27; baseline start 2006-11-27 08:00 → 2006-11-27; baseline finish 2006-11-28 17:00 → 2006-11-28 |
| 6 | Зависание на фрагменте схемы | 2006-11-28 13:00 A → 2006-11-28 A | 2006-11-28 15:00 A → 2006-11-28 A |  |  |  | baseline start 2006-11-28 08:00 → 2006-11-28; baseline finish 2006-11-28 17:00 → 2006-11-28 |
| 7 | Треугольники, четырёхугольники с числом узлов более 3-х/4-х | 2006-11-28 15:00 A → 2006-11-28 A | 2006-11-28 17:00 A → 2006-11-28 A |  |  |  | baseline start 2006-11-27 08:00 → 2006-11-27; baseline finish 2006-11-27 17:00 → 2006-11-27 |
| 8 | Неправильно работает отсечение окном | 2006-11-29 08:00 A → 2006-11-29 A | 2006-11-29 12:00 A → 2006-11-29 A |  |  |  |  |
| 9 | **Новый фунционал** | 2006-12-01 13:00 A → 2006-12-01 A | 2006-12-18 16:00 A → 2006-12-18 A |  |  |  | baseline start 2006-11-29 08:00 → 2006-11-29; baseline finish 2006-12-13 17:00 → 2006-12-13 |
| 10 | Более корректная прорисовка шрифтов в значениях | 2006-12-05 14:00 A → 2006-12-05 A | 2006-12-07 09:00 A → 2006-12-07 A |  |  |  | constraint start no earlier than 2006-12-05 05:00 → start no earlier than 2006-12-05 |
| 11 | Коэффициент в настройки для шкалы деформации | 2006-12-11 15:00 A → 2006-12-11 A | 2006-12-11 20:00 A → 2006-12-11 A |  |  | 29, 21 → 29 | constraint start no earlier than 2006-11-30 06:00 → start no earlier than 2006-11-30; baseline start 2006-11-29 08:00 → 2006-11-29; baseline finish 2006-11-29 17:00 → 2006-11-29 |
| 12 | Настройки шрифтов | 2006-12-11 21:00 A → 2006-12-11 A | 2006-12-12 11:00 A → 2006-12-12 A |  |  |  | baseline start 2006-11-30 08:00 → 2006-11-30; baseline finish 2006-12-01 17:00 → 2006-12-01 |
| 13 | Обычные кнопки вместо чекбоксов | 2006-12-12 11:00 A → 2006-12-12 A | 2006-12-12 15:00 A → 2006-12-12 A |  |  |  |  |
| 14 | **Отображение усилий** | 2006-12-01 13:00 A → 2006-12-01 A | 2006-12-18 16:00 A → 2006-12-18 A |  |  |  | baseline start 2006-12-05 08:00 → 2006-12-05; baseline finish 2006-12-06 17:00 → 2006-12-06 |
| 15 | Получение результатов | 2006-12-01 13:00 A → 2006-12-01 A | 2006-12-04 14:00 A → 2006-12-04 A |  |  |  | baseline start 2006-12-05 08:00 → 2006-12-05; baseline finish 2006-12-05 17:00 → 2006-12-05 |
| 16 | Отрисовка сетки | 2006-12-04 14:00 A → 2006-12-04 A | 2006-12-05 14:00 A → 2006-12-05 A |  |  |  | constraint start no earlier than 2006-12-04 12:00 → start no earlier than 2006-12-04; baseline start 2006-12-06 08:00 → 2006-12-06; baseline finish 2006-12-06 17:00 → 2006-12-06 |
| 17 | **Отрисовка сетки, значения в центре** | 2006-12-07 09:00 A → 2006-12-07 A | 2006-12-18 16:00 A → 2006-12-18 A |  |  |  |  |
| 18 | Оцифровка фактора внутри эл-та | 2006-12-07 09:00 A → 2006-12-07 A | 2006-12-07 14:00 A → 2006-12-07 A |  |  |  |  |
| 19 | Разбиение элемента по значениям фактора внутри | 2006-12-12 15:00 A → 2006-12-12 A | 2006-12-13 13:00 A → 2006-12-13 A |  |  |  |  |
| 20 | Учет промежуточных узлоа для треугольников, четырёхугольников с числом узлов более 3-х/4-х | 2006-12-18 10:00 A → 2006-12-18 A | 2006-12-18 16:00 A → 2006-12-18 A |  |  |  | constraint start no earlier than 2006-12-18 10:00 → start no earlier than 2006-12-18 |
| 21 | Клеёнка | 2006-12-07 14:00 A → 2006-12-07 A | 2006-12-08 11:00 A → 2006-12-08 A |  |  | 18, 17, 16 → 18 |  |
| 22 | Промежуточное тестирование | 2006-12-13 13:00 A → 2006-12-13 A | 2006-12-14 11:00 A → 2006-12-14 A |  |  | 19, 13 → 19 |  |
| 23 | Приезд КВС, показ рез-тов | 2006-12-14 13:00 A → 2006-12-14 A | 2006-12-14 17:00 A → 2006-12-14 A |  |  |  | constraint start no earlier than 2006-12-14 13:00 → start no earlier than 2006-12-14 |
| 24 | Исправление ошибок (от Куликова) | 2006-12-18 16:00 A → 2006-12-18 A | 2006-12-19 09:00 A → 2006-12-19 A |  |  |  |  |
| 25 | Исправление ошибок 2 | 2006-12-20 10:00 A → 2006-12-20 A | 2006-12-21 10:00 A → 2006-12-21 A |  |  |  | constraint start no earlier than 2006-12-20 10:00 → start no earlier than 2006-12-20 |
| 26 | **Отображение результатов внутри вьювер-а** | 2006-11-29 13:00 A → 2006-11-29 A | 2006-12-26 10:00 → 2006-12-26 |  | 0d → 2379.75d |  | baseline start 2006-12-07 08:00 → 2006-12-07; baseline finish 2006-12-12 17:00 → 2006-12-12 |
| 27 | Кнопка и отображение результатов | 2006-11-29 13:00 A → 2006-11-29 A | 2006-11-30 12:00 A → 2006-11-30 A |  |  |  |  |
| 28 | View для результатов расчета | 2006-11-30 13:00 A → 2006-11-30 A | 2006-12-01 12:00 A → 2006-12-01 A |  |  |  | baseline start 2006-12-07 08:00 → 2006-12-07; baseline finish 2006-12-07 17:00 → 2006-12-07 |
| 29 | Frame для результатов расчета | 2006-12-08 16:00 A → 2006-12-08 A | 2006-12-11 15:00 A → 2006-12-11 A |  |  |  |  |
| 30 | Новый тулбар | 2006-12-21 10:00 → 2006-12-21 | 2006-12-22 10:00 → 2006-12-22 |  | 0d → 2374.75d |  | baseline start 2006-12-08 08:00 → 2006-12-08; baseline finish 2006-12-08 17:00 → 2006-12-08 |
| 31 | Многооконный режим | 2006-12-22 10:00 → 2006-12-22 | 2006-12-25 10:00 → 2006-12-25 |  | 0d → 2374.75d |  | baseline start 2006-12-12 08:00 → 2006-12-12; baseline finish 2006-12-12 17:00 → 2006-12-12 |
| 32 | Завершение реализации | 2006-12-25 10:00 → 2006-12-25 | 2006-12-26 10:00 → 2006-12-26 |  | 0d → 2374.75d |  |  |
| 33 | Тестирование поставки | 2006-12-26 10:00 → 2006-12-26 | 2006-12-27 10:00 → 2007-01-01 (+5d) | 1d → 4.25d | 0d → 2374.75d |  | baseline start 2006-12-13 08:00 → 2006-12-13; baseline finish 2006-12-13 17:00 → 2006-12-13 |
