# ForumView1

How a schedule from MS Project changed from version to version. A marks actual dates.

## Version 1 (saved 2006-11-26, file ForumView1.mpp)

Note of the change: Initial

| ID | WBS | Task | Duration | Start | Finish | Predecessors | Complete | Total float | Constraint |
| --- | --- | --- | --- | --- | --- | --- | --- | --- | --- |
| 1 |  | Составление календарного плана | 1d | 2004-03-23 A | 2004-03-23 A |  | 100% |  |  |
| 2 | 2 | **Изучение существующих реализаций** | 10d | 2004-03-24 A | 2004-04-08 | 1 | 40% | 0d |  |
| 3 |  | Scad Viewer BCB - внутренний дизайн | 1d | 2004-03-24 A | 2004-03-24 A |  | 100% |  |  |
| 4 |  | Приведение версиий для BCB и VC в соответствие | 1d | 2004-04-02 A | 2004-04-02 A | 18 | 100% |  |  |
| 5 |  | KiewView - изучение исходников | 2d | 2004-04-06 | 2004-04-07 | 4 |  | 0d |  |
| 6 |  | Forum - пользовательский интерфейс и создание моделей | 1d | 2004-04-08 | 2004-04-08 | 5 |  | 0d |  |
| 7 | 3 | **Architecture** | 6d | 2004-04-09 | 2004-04-20 | 6 |  | 0d |  |
| 8 |  | Выделение компонентов | 2d | 2004-04-09 | 2004-04-13 |  |  | 0d |  |
| 9 |  | Интерфейс управления рендерером | 2d | 2004-04-14 | 2004-04-15 | 8 |  | 0d |  |
| 10 |  | Разработка внутреннего формата Rendering Engine | 2d | 2004-04-16 | 2004-04-20 | 9 |  | 0d |  |
| 11 | 4 | **Realization** | 17d? | 2004-04-21 | 2004-05-19 | 7 |  | 0d |  |
| 12 |  | User interface | 5d? | 2004-04-21 | 2004-04-28 |  |  | 0d |  |
| 13 | 4.2 | **Rendering engine** | 12d | 2004-04-29 | 2004-05-19 | 12 |  | 0d |  |
| 14 |  | Триангуляция форумовских объектов | 5d | 2004-04-29 | 2004-05-06 |  |  | 0d |  |
| 15 |  | OpenGL | 2d | 2004-05-07 | 2004-05-11 | 14 |  | 0d |  |
| 16 |  | DirectX | 5d | 2004-05-12 | 2004-05-19 | 15 |  | 0d |  |
| 17 |  | Тестирование | 5d | 2004-05-20 | 2004-05-27 | 11 |  | 0d |  |
| 18 | 6 | **Поддержка старой реализации** | 5d | 2004-03-25 A | 2004-04-01 A |  | 100% |  |  |
| 19 |  | Вывод чертежей на плоттер | 2d | 2004-03-25 A | 2004-03-26 A | 3 | 100% |  |  |
| 20 |  | Версия 1.1.0.82 (см.History.txt) | 2d | 2004-03-30 A | 2004-03-31 A | 19 | 100% |  |  |
| 21 |  | Проблемы с выводом на HP DesignJet500 | 1d | 2004-04-01 A | 2004-04-01 A | 20 | 100% |  |  |
| 23 | 7 | **Достижение функциональности Scad Viewer BCB** | 10d | 2004-11-02 A | 2004-11-17 |  | 71% | 434d | start no earlier than 2004-11-02 |
| 24 |  | Копирование картинки в буфер обмена | 0.5d | 2004-11-02 A | 2004-11-02 A |  | 100% |  |  |
| 25 |  | Информация о модели в статусбаре | 0.5d | 2004-11-02 A | 2004-11-02 A | 24 | 100% |  |  |
| 26 |  | Удаление результатов расчета | 1d | 2004-11-03 A | 2004-11-03 A | 25 | 100% |  |  |
| 27 | 7.4 | **Экспорт файлов** | 2d | 2004-11-10 A | 2004-11-11 A | 37 | 100% |  |  |
| 28 |  | DXF | 1d | 2004-11-10 A | 2004-11-10 A |  | 100% |  |  |
| 29 |  | BMP | 1d | 2004-11-11 A | 2004-11-11 A | 28 | 100% |  |  |
| 30 | 7.5 | **Экспорт каталога в RTF** | 2d | 2004-11-12 A | 2004-11-16 | 29 | 50% | 434d |  |
| 31 |  | Property Page | 1d | 2004-11-12 | 2004-11-12 |  |  | 435d |  |
| 32 |  | Реализация | 1d | 2004-11-16 A | 2004-11-16 A | 31 | 100% |  |  |
| 33 |  | Пропорциональное изменение размеров панелей при ресайзинге | 1d | 2004-11-17 | 2004-11-17 | 30 |  | 434d |  |
| 35 | 8 | **Дополнительная функциональность** | 19d? | 2004-11-04 A | 2004-12-07 |  | 57% | 423d | start no earlier than 2004-11-02 |
| 36 | 8.1 | **Корректная отрисовка полупрозрачной модели** | 3d | 2004-11-04 A | 2004-11-09 A | 26 | 100% |  |  |
| 37 |  | Алгоритм без разбиения элементов | 3d | 2004-11-04 A | 2004-11-09 A |  | 100% |  |  |
| 38 |  | Разделить Main Toolbar на несколько по функц. Назначению | 1d | 2004-11-18 A | 2004-11-18 A | 33 | 100% |  |  |
| 39 |  | Selection/Hiding элемента | 2d | 2004-11-19 A | 2004-11-23 A | 38 | 100% |  |  |
| 40 | 8.4 | **Проблемы:** | 2d? | 2004-11-24 A | 2004-11-25 | 39 | 50% | 424d |  |
| 41 |  | Неравномерное залитие цветом эл-тов в перспективе | 1d? | 2004-11-24 | 2004-11-24 |  |  | 425d |  |
| 42 |  | Неправильное отображение совпадающих пластин | 1d? | 2004-11-25 A | 2004-11-25 A | 41 | 100% |  |  |
| 43 |  | Контекстная справка | 5d | 2004-11-26 | 2004-12-03 | 40 |  | 424d |  |
| 44 |  | Поддержка других типов файлов | 1d? | 2004-12-07 A | 2004-12-07 A | 43 | 100% |  |  |
| 46 | 9 | **Планы** | 1d? | 2004-05-28 A | 2004-05-28 | 17 | 23% | 532d |  |
| 47 |  | ? Element properties | 1d? | 2004-05-28 | 2004-05-28 |  |  | 532d |  |
| 48 |  | Отображение результатов расчета | 1d? | 2004-05-28 | 2004-05-28 |  |  | 532d |  |
| 49 |  | Поддержка рендерера Mpeg | 1d? | 2004-05-28 A | 2004-05-28 |  | 75% | 532d |  |
| 51 |  | Убрать отменку элемента после опции "Элементы в плоскости выбора | 2h | 2004-05-28 | 2004-05-28 |  |  | 532.75d |  |
| 52 | 10 | **Завершение 1-го договора** | 12d? | 2006-11-27 | 2006-12-14 |  |  | 0d |  |
| 53 | 10.1 | **Исправление ошибок** | 2d? | 2006-11-27 | 2006-11-28 |  |  | 1d |  |
| 54 | 10.1.1 | **Баг с треугольниками** | 2d? | 2006-11-27 | 2006-11-28 |  |  | 1d |  |
| 55 |  | Треугольники, четырёхугольники с числом узлов болдее 3-х/4-х | 1d | 2006-11-27 | 2006-11-27 |  |  | 1d | start no earlier than 2006-11-27 |
| 56 |  | Зависание на фрагменте схемы | 1d? | 2006-11-28 | 2006-11-28 | 55 |  | 1d |  |
| 57 | 10.2 | **Новый фунционал** | 9d | 2006-11-29 | 2006-12-13 | 53 |  | 1d |  |
| 58 |  | Коэффициент в настройки для шкалы деформации | 1d | 2006-11-29 | 2006-11-29 |  |  | 1d |  |
| 59 |  | Настройки шрифтов | 2d | 2006-11-30 | 2006-12-01 | 58 |  | 1d |  |
| 60 | 10.2.3 | **Отображение усилий** | 2d | 2006-12-05 | 2006-12-06 | 59 |  | 1d |  |
| 61 |  | Получение результатов | 1d | 2006-12-05 | 2006-12-05 |  |  | 1d |  |
| 62 |  | Отрисовка сетки | 1d | 2006-12-06 | 2006-12-06 | 61 |  | 1d |  |
| 63 | 10.2.4 | **Отображение результатов внутри вьювер-а** | 3d | 2006-12-07 | 2006-12-12 | 60 |  | 1d |  |
| 64 |  | View для результатов расчета | 1d | 2006-12-07 | 2006-12-07 |  |  | 1d |  |
| 65 |  | Новый тулбар | 1d | 2006-12-08 | 2006-12-08 | 64 |  | 1d |  |
| 66 |  | Многооконный режим | 1d | 2006-12-12 | 2006-12-12 | 65 |  | 1d |  |
| 67 |  | Тестирование поставки | 1d | 2006-12-13 | 2006-12-13 | 66 |  | 1d |  |
| 68 |  | Milestone | 0d | 2006-12-14 | 2006-12-14 | 67 |  | 0d | must finish on 2006-12-14 |

## Version 2 (saved 2006-11-30, file ForumView.mpp)

Note of the change: Initial

Last finish stays 2006-12-14. Complete tasks 17 → 23.

Added:

| ID | Task | Duration | Start | Finish | Predecessors | Constraint | Resources |
| --- | --- | --- | --- | --- | --- | --- | --- |
| 57 | Неправильно работает отсечение окном | 4h | 2006-11-29 A | 2006-11-29 A | 56 |  | Цветков |
| 58 | **Просмотр результатов в окне вьювера** | 4d? | 2006-11-29 A | 2006-12-05 | 57 |  | Цветков |
| 59 | Кнопка и отображение результатов | 1d | 2006-11-29 A | 2006-11-30 A |  |  |  |
| 60 | Получение комментариев от Карпиловского | 2d | 2006-11-30 | 2006-12-04 | 59 | start no earlier than 2006-11-27 | КВС |
| 61 | Завершение реализации | 1d? | 2006-12-04 | 2006-12-05 | 60 |  |  |
| 65 | Обычные кнопки вместо чекбоксов | 4h | 2006-12-05 | 2006-12-05 | 64 |  | Цветков |

Changed:

| ID | Task | Start | Finish | Duration | Complete | Total float | Predecessors | Other |
| --- | --- | --- | --- | --- | --- | --- | --- | --- |
| 46 | **Планы** |  |  |  | 23% → 25% | 532d → 534d |  |  |
| 51 | **Завершение 1-го договора** | 2006-11-27 A |  | 12d? → 13.75d? | 0% → 21% |  |  | constraint none → start no earlier than 2006-11-27; resources none → Цветков |
| 52 | Убрать отменку элемента после опции "Элементы в плоскости выбора | 2004-05-28 → 2006-11-27 A (+913d) | 2004-05-28 → 2006-11-27 A (+913d) |  | 0% → 100% | 532.75d → none |  | constraint none → must start on 2006-11-27; resources none → Цветков |
| 53 | **Исправление ошибок** | 2006-11-27 A | 2006-11-28 → 2006-12-05 (+7d) | 2d? → 6d? | 0% → 50% | 1d → 7.5d |  | resources none → Цветков |
| 54 | Баг с треугольниками | 2006-11-27 A | 2006-11-28 A | 2d? → 8h | 0% → 100% | 1d → none | none → 52 | constraint none → start no earlier than 2006-11-27; resources none → Цветков |
| 55 | Зависание на фрагменте схемы | 2006-11-28 A | 2006-11-28 A | 1d? → 2h | 0% → 100% | 1d → none | 56 → 54 | resources none → Цветков |
| 56 | Треугольники, четырёхугольники с числом узлов болдее 3-х/4-х | 2006-11-27 → 2006-11-28 A (+1d) | 2006-11-27 → 2006-11-28 A (+1d) | 1d → 2h | 0% → 100% | 1d → none | none → 55 | constraint start no earlier than 2006-11-27 → none; resources none → Цветков |
| 62 | **Новый фунционал** | 2006-11-29 → 2006-11-30 (+1d) |  | 9d → 9.5d |  | 1d → 1.5d | 53 → none | resources none → Цветков |
| 63 | Коэффициент в настройки для шкалы деформации | 2006-11-29 → 2006-11-30 (+1d) | 2006-11-29 → 2006-11-30 (+1d) |  |  | 1d → 1.5d |  | constraint none → start no earlier than 2006-11-30; resources none → Цветков |
| 64 | Настройки шрифтов | 2006-11-30 → 2006-12-01 (+1d) | 2006-12-01 → 2006-12-04 (+3d) |  |  | 1d → 1.5d |  | resources none → Цветков |
| 66 | **Отображение усилий** |  | 2006-12-06 → 2006-12-07 (+1d) |  |  | 1d → 1.5d | 64 → 65 | resources none → Цветков |
| 67 | Получение результатов |  | 2006-12-05 → 2006-12-06 (+1d) |  |  | 1d → 1.5d |  |  |
| 68 | Отрисовка сетки |  | 2006-12-06 → 2006-12-07 (+1d) |  |  | 1d → 1.5d |  |  |
| 69 | **Отображение результатов внутри вьювер-а** |  |  |  |  | 1d → 1.5d |  | resources none → Цветков |
| 70 | View для результатов расчета |  | 2006-12-07 → 2006-12-08 (+1d) |  |  | 1d → 1.5d |  |  |
| 71 | Новый тулбар |  | 2006-12-08 → 2006-12-11 (+3d) |  |  | 1d → 1.5d |  |  |
| 72 | Многооконный режим | 2006-12-12 → 2006-12-11 (-1d) |  |  |  | 1d → 1.5d |  |  |
| 73 | Тестирование поставки | 2006-12-13 → 2006-12-12 (-1d) |  |  |  | 1d → 1.5d |  |  |
